# 项目1t

Schedule from MS Project, 2010-01-04 to 2010-05-17.

## Calendars

- 标准: Mon-Fri 08:00-12:00, 13:00-17:00; Sat-Sun off.

## Resources

| Resource |
| --- |
| 管理人员 |
| 项目经理 |
| 分析人员 |
| 开发人员 |
| 测试人员 |
| 讲师 |
| 技术联络人员 |
| 部署小组 |

## Schedule

| ID | WBS | Task | Type | Duration | Start | Finish | Predecessors | Total slack | Resources | Work |
| --- | --- | --- | --- | --- | --- | --- | --- | --- | --- | --- |
| 1 | 1 | **软件开发** |  | 95.75d | 2010-01-04 | 2010-05-17 |  |  |  | 1532h |
| 2 | 1.1 | **项目范围规划** |  | 3.5d | 2010-01-04 | 2010-01-07 |  | 0d |  | 28h |
| 3 | 1.1.1 | 确定项目范围 |  | 4h | 2010-01-04 | 2010-01-04 |  | 0d | 管理人员 | 4h |
| 4 | 1.1.2 | 获得项目所需资金 |  | 1d | 2010-01-04 | 2010-01-05 | 3 | 0d | 管理人员 | 8h |
| 5 | 1.1.3 | 定义预备资源 |  | 1d | 2010-01-05 | 2010-01-06 | 4 | 0d | 项目经理 | 8h |
| 6 | 1.1.4 | 获得核心资源 |  | 1d | 2010-01-06 | 2010-01-07 | 5 | 0d | 项目经理 | 8h |
| 7 | 1.1.5 | 完成项目范围规划 | milestone | 0d | 2010-01-07 | 2010-01-07 | 6 | 0d |  |  |
| 8 | 1.2 | **分析/软件需求** |  | 14d | 2010-01-07 | 2010-01-27 |  | 0d |  | 120h |
| 9 | 1.2.1 | 行为需求分析 |  | 5d | 2010-01-07 | 2010-01-14 | 7 | 0d | 分析人员 | 40h |
| 10 | 1.2.2 | 起草初步的软件规范 |  | 3d | 2010-01-14 | 2010-01-19 | 9 | 0d | 分析人员 | 24h |
| 11 | 1.2.3 | 制定初步预算 |  | 2d | 2010-01-19 | 2010-01-21 | 10 | 0d | 项目经理 | 16h |
| 12 | 1.2.4 | 工作组共同审阅软件规范/预算 |  | 4h | 2010-01-21 | 2010-01-21 | 11 | 0d | 项目经理; 分析人员 | 8h |
| 13 | 1.2.5 | 根据反馈修改软件规范 |  | 1d | 2010-01-22 | 2010-01-22 | 12 | 0d | 分析人员 | 8h |
| 14 | 1.2.6 | 制定交付期限 |  | 1d | 2010-01-25 | 2010-01-25 | 13 | 0d | 项目经理 | 8h |
| 15 | 1.2.7 | 获得开展后续工作的批准(概念、期限和预算) |  | 4h | 2010-01-26 | 2010-01-26 | 14 | 0d | 管理人员; 项目经理 | 8h |
| 16 | 1.2.8 | 获得所需资源 |  | 1d | 2010-01-26 | 2010-01-27 | 15 | 0d | 项目经理 | 8h |
| 17 | 1.2.9 | 完成分析工作 | milestone | 0d | 2010-01-27 | 2010-01-27 | 16 | 0d |  |  |
| 18 | 1.3 | **设计** |  | 14.5d | 2010-01-27 | 2010-02-16 |  | 0d |  | 120h |
| 19 | 1.3.1 | 审阅初步的软件规范 |  | 2d | 2010-01-27 | 2010-01-29 | 17 | 0d | 分析人员 | 16h |
| 20 | 1.3.2 | 制定功能规范 |  | 5d | 2010-01-29 | 2010-02-05 | 19 | 0d | 分析人员 | 40h |
| 21 | 1.3.3 | 根据功能规范开发原型 |  | 4d | 2010-02-05 | 2010-02-11 | 20 | 0d | 分析人员 | 32h |
| 22 | 1.3.4 | 审阅功能规范 |  | 2d | 2010-02-11 | 2010-02-15 | 21 | 0d | 管理人员 | 16h |
| 23 | 1.3.5 | 根据反馈修改功能规范 |  | 1d | 2010-02-15 | 2010-02-16 | 22 | 0d | 管理人员 | 8h |
| 24 | 1.3.6 | 获得开展后续工作的批准 |  | 4h | 2010-02-16 | 2010-02-16 | 23 | 0d | 管理人员; 项目经理 | 8h |
| 25 | 1.3.7 | 完成设计工作 | milestone | 0d | 2010-02-16 | 2010-02-16 | 24 | 0d |  |  |

| ID | WBS | Task | Type | Duration | Start | Finish | Predecessors | Total slack | Free slack | Resources | Work |
| --- | --- | --- | --- | --- | --- | --- | --- | --- | --- | --- | --- |
| 26 | 1.4 | **开发** |  | 21.75d | 2010-02-17 | 2010-03-18 |  | 0d |  |  | 264h |
| 27 | 1.4.1 | 审阅功能规范 |  | 1d | 2010-02-17 | 2010-02-17 | 25 | 0d |  | 开发人员 | 8h |
| 28 | 1.4.2 | 确定模块化/分层设计参数 |  | 1d | 2010-02-18 | 2010-02-18 | 27 | 0d |  | 开发人员 | 8h |
| 29 | 1.4.3 | 分派任务给开发人员 |  | 1d | 2010-02-19 | 2010-02-19 | 28 | 0d |  | 开发人员 | 8h |
| 30 | 1.4.4 | 编写代码 |  | 15d | 2010-02-22 | 2010-03-12 | 29 | 0d |  | 开发人员 | 120h |
| 31 | 1.4.5 | 开发人员测试(初步调试) |  | 15d | 2010-02-25 | 2010-03-18 | 30FS-7.5% | 0d |  | 开发人员 | 120h |
| 32 | 1.4.6 | 完成开发工作 | milestone | 0d | 2010-03-18 | 2010-03-18 | 31 | 0d |  |  |  |
| 33 | 1.5 | **测试** |  | 48.75d | 2010-02-17 | 2010-04-26 |  | 15d |  |  | 280h |
| 34 | 1.5.1 | 根据产品规范制定单元测试计划 |  | 4d | 2010-02-17 | 2010-02-22 | 25 | 17.75d |  | 测试人员 | 32h |
| 35 | 1.5.2 | 根据产品规范制定整体测试计划 |  | 4d | 2010-02-17 | 2010-02-22 | 25 | 59.75d |  | 测试人员 | 32h |
| 36 | 1.5.3 | **单元测试** |  | 15d | 2010-03-18 | 2010-04-08 |  | 0d |  |  | 120h |
| 37 | 1.5.3.1 | 审阅模块化代码 |  | 5d | 2010-03-18 | 2010-03-25 | 32, 34 | 0d |  | 测试人员 | 40h |
| 38 | 1.5.3.2 | 测试组件模块是否符合产品规范 |  | 2d | 2010-03-25 | 2010-03-29 | 32, 37 | 0d |  | 测试人员 | 16h |
| 39 | 1.5.3.3 | 找出不符合产品规范的异常情况 |  | 3d | 2010-03-29 | 2010-04-01 | 38 | 0d |  | 测试人员 | 24h |
| 40 | 1.5.3.4 | 修改代码 |  | 3d | 2010-04-01 | 2010-04-06 | 39 | 0d |  | 测试人员 | 24h |
| 41 | 1.5.3.5 | 重新测试经过修改的代码 |  | 2d | 2010-04-06 | 2010-04-08 | 40 | 0d |  | 测试人员 | 16h |
| 42 | 1.5.3.6 | 完成单元测试 | milestone | 0d | 2010-04-08 | 2010-04-08 | 41 | 0d |  |  |  |
| 43 | 1.5.4 | **整体测试** |  | 12d | 2010-04-08 | 2010-04-26 |  | 0d |  |  | 96h |
| 44 | 1.5.4.1 | 测试模块集成情况 |  | 5d | 2010-04-08 | 2010-04-15 | 42 | 0d |  | 测试人员 | 40h |
| 45 | 1.5.4.2 | 找出不符合规范的异常情况 |  | 2d | 2010-04-15 | 2010-04-19 | 44 | 0d |  | 测试人员 | 16h |
| 46 | 1.5.4.3 | 修改代码 |  | 3d | 2010-04-19 | 2010-04-22 | 45 | 0d |  | 测试人员 | 24h |
| 47 | 1.5.4.4 | 重新测试经过修改的代码 |  | 2d | 2010-04-22 | 2010-04-26 | 46 | 0d |  | 测试人员 | 16h |
| 48 | 1.5.4.5 | 完成整体测试 | milestone | 0d | 2010-04-26 | 2010-04-26 | 47 | 0d |  |  |  |
| 49 | 1.6 | **培训** |  | 45.75d | 2010-02-17 | 2010-04-21 |  | 3d |  |  | 256h |
| 50 | 1.6.1 | 制定针对最终用户的培训规范 |  | 3d | 2010-02-17 | 2010-02-19 | 25 | 21.75d | 18.75d | 讲师 | 24h |
| 51 | 1.6.2 | 制定针对产品技术支持人员的培训规范 |  | 3d | 2010-02-17 | 2010-02-19 | 25 | 21.75d | 18.75d | 讲师 | 24h |
| 52 | 1.6.3 | 确定培训方法(基于计算机的培训、教室授课等) |  | 2d | 2010-02-17 | 2010-02-18 | 25 | 22.75d | 19.75d | 讲师 | 16h |
| 53 | 1.6.4 | 编写培训材料 |  | 3w | 2010-03-18 | 2010-04-08 | 32, 50, 51, 52 | 3d | 0d | 讲师 | 120h |
| 54 | 1.6.5 | 研究培训材料的可用性 |  | 4d | 2010-04-08 | 2010-04-14 | 53 | 3d | 0d | 讲师 | 32h |
| 55 | 1.6.6 | 对培训材料进行最后处理 |  | 3d | 2010-04-14 | 2010-04-19 | 54 | 3d | 0d | 讲师 | 24h |
| 56 | 1.6.7 | 制定培训机制 |  | 2d | 2010-04-19 | 2010-04-21 | 55 | 3d | 0d | 讲师 | 16h |
| 57 | 1.6.8 | 完成培训材料 | milestone | 0d | 2010-04-21 | 2010-04-21 | 56 | 3d |  |  |  |

| ID | WBS | Task | Type | Duration | Start | Finish | Predecessors | Total slack | Free slack | Resources | Work |
| --- | --- | --- | --- | --- | --- | --- | --- | --- | --- | --- | --- |
| 58 | 1.7 | **文档** |  | 30.5d | 2010-02-17 | 2010-03-31 |  | 18.25d |  |  | 336h |
| 59 | 1.7.1 | 制定“帮助”规范 |  | 1d | 2010-02-17 | 2010-02-17 | 25 | 27.75d | 9.5d | 技术联络人员 | 8h |
| 60 | 1.7.2 | 开发“帮助”系统 |  | 3w | 2010-03-03 | 2010-03-24 | 30FS-5%, 59 | 18.25d | 0d | 技术联络人员 | 120h |
| 61 | 1.7.3 | 审阅“帮助”文档 |  | 3d | 2010-03-24 | 2010-03-29 | 60 | 18.25d | 0d | 技术联络人员 | 24h |
| 62 | 1.7.4 | 根据反馈修改“帮助”文档 |  | 2d | 2010-03-29 | 2010-03-31 | 61 | 18.25d | 0d | 技术联络人员 | 16h |
| 63 | 1.7.5 | 制定用户手册规范 |  | 2d | 2010-02-17 | 2010-02-18 | 25 | 27.75d | 8.5d | 技术联络人员 | 16h |
| 64 | 1.7.6 | 编写用户手册 |  | 3w | 2010-03-03 | 2010-03-24 | 30FS-5%, 63 | 19.25d | 0d | 技术联络人员 | 120h |
| 65 | 1.7.7 | 审阅所有的用户文档 |  | 2d | 2010-03-24 | 2010-03-26 | 64 | 19.25d | 0d | 技术联络人员 | 16h |
| 66 | 1.7.8 | 根据反馈修改用户文档 |  | 2d | 2010-03-26 | 2010-03-30 | 65 | 19.25d | 1d | 技术联络人员 | 16h |
| 67 | 1.7.9 | 完成文档 | milestone | 0d | 2010-03-31 | 2010-03-31 | 62, 66 | 18.25d |  |  |  |
| 68 | 1.8 | **试生产** |  | 70.25d | 2010-01-27 | 2010-05-05 |  | 0d |  |  | 64h |
| 69 | 1.8.1 | 确定测试群体 |  | 1d | 2010-01-27 | 2010-01-28 | 17 | 61.25d | 0d | 项目经理 | 8h |
| 70 | 1.8.2 | 确定软件分发机制 |  | 1d | 2010-01-28 | 2010-01-29 | 69 | 61.25d |  |  |  |
| 71 | 1.8.3 | 安装/部署软件 |  | 1d | 2010-04-26 | 2010-04-27 | 48, 57, 67, 70 | 0d |  | 部署小组 | 8h |
| 72 | 1.8.4 | 获得用户反馈 |  | 1w | 2010-04-27 | 2010-05-04 | 71 | 0d |  | 部署小组 | 40h |
| 73 | 1.8.5 | 评估测试信息 |  | 1d | 2010-05-04 | 2010-05-05 | 72 | 0d |  | 部署小组 | 8h |
| 74 | 1.8.6 | 完成试生产工作 | milestone | 0d | 2010-05-05 | 2010-05-05 | 73 | 0d |  |  |  |
| 75 | 1.9 | **部署** |  | 5d | 2010-05-05 | 2010-05-12 |  | 0d |  |  | 40h |
| 76 | 1.9.1 | 确定最终部署策略 |  | 1d | 2010-05-05 | 2010-05-06 | 74 | 0d |  | 部署小组 | 8h |
| 77 | 1.9.2 | 确定部署方法 |  | 1d | 2010-05-06 | 2010-05-07 | 76 | 0d |  | 部署小组 | 8h |
| 78 | 1.9.3 | 获得部署所需资源 |  | 1d | 2010-05-07 | 2010-05-10 | 77 | 0d |  | 部署小组 | 8h |
| 79 | 1.9.4 | 培训技术支持人员 |  | 1d | 2010-05-10 | 2010-05-11 | 78 | 0d |  | 部署小组 | 8h |
| 80 | 1.9.5 | 部署软件 |  | 1d | 2010-05-11 | 2010-05-12 | 79 | 0d |  | 部署小组 | 8h |
| 81 | 1.9.6 | 完成部署工作 | milestone | 0d | 2010-05-12 | 2010-05-12 | 80 | 0d |  |  |  |

| ID | WBS | Task | Type | Duration | Start | Finish | Predecessors | Total slack | Resources | Work |
| --- | --- | --- | --- | --- | --- | --- | --- | --- | --- | --- |
| 82 | 1.10 | **实施工作结束后的回顾** |  | 3d | 2010-05-12 | 2010-05-17 |  | 0d |  | 24h |
| 83 | 1.10.1 | 将经验教训记录存档 |  | 1d | 2010-05-12 | 2010-05-13 | 81 | 0d | 项目经理 | 8h |
| 84 | 1.10.2 | 分发给工作组成员 |  | 1d | 2010-05-13 | 2010-05-14 | 83 | 0d | 项目经理 | 8h |
| 85 | 1.10.3 | 建立软件维护小组 |  | 1d | 2010-05-14 | 2010-05-17 | 84 | 0d | 项目经理 | 8h |
| 86 | 1.10.4 | 完成回顾 | milestone | 0d | 2010-05-17 | 2010-05-17 | 85 | 0d |  |  |
| 87 | 1.11 | 软件开发模板结束 | milestone | 0d | 2010-05-17 | 2010-05-17 | 86 | 0d |  |  |
